# ProyectoPrueba

How a schedule from MS Project changed from version to version. A marks actual dates.

## Version 1 (saved 2019-07-25)

Note of the change: Se sube la planeacion del proyecto o WBS, falta completar tareas al 100%

| ID | WBS | Task | Duration | Start | Finish | Predecessors | Complete | Total float | Constraint |
| --- | --- | --- | --- | --- | --- | --- | --- | --- | --- |
| 1 | 1 | **Proyecto Aplicación web "Mueblería Casa Morales"** | 71d | 2019-05-03 A | 2019-08-09 |  | 66% |  |  |
| 2 | 1.1 | **Planificación/Entendimiento del negocio** | 11d | 2019-05-03 A | 2019-05-17 |  | 99% | 0d |  |
| 3 |  | Entendimiento del negocio | 3d | 2019-05-03 A | 2019-05-07 A |  | 100% |  |  |
| 4 |  | Definir el protocolo de entrega con el cliente | 1d | 2019-05-08 A | 2019-05-08 A | 3 | 100% |  |  |
| 5 |  | Definir ciclo y actividades con base a la descripción del proyecto | 4d | 2019-05-09 A | 2019-05-14 A | 4 | 100% |  |  |
| 6 |  | Determinar tiempo estimado para cada actividad | 3d | 2019-05-10 A | 2019-05-14 A | 5FF | 100% |  |  |
| 7 |  | Establecer equipo de trabajo | 1d | 2019-05-15 A | 2019-05-15 A | 5, 6 | 100% |  |  |
| 8 |  | Establecer calendario de actividades | 1d | 2019-05-16 A | 2019-05-16 A | 7 | 100% |  |  |
| 9 |  | Formalizar el inicio de un nuevo ciclo del proyecto | 1d | 2019-05-17 A | 2019-05-17 A | 3, 4, 5, 6, 7, 8 | 100% |  |  |
| 10 |  | Hito "Firma de inicio de un nuevo proyecto" | 0d | 2019-05-17 | 2019-05-17 |  |  |  |  |
| 11 | 1.2 | **Definición de requerimientos** | 15d | 2019-05-20 A | 2019-06-07 |  | 99% |  |  |
| 12 |  | Análisis del problema | 5d | 2019-05-20 A | 2019-05-24 A |  | 100% |  |  |
| 13 |  | Recopilar información | 3d | 2019-05-22 A | 2019-05-24 A | 12FF | 100% |  |  |
| 14 |  | Identificación de requerimientos | 4d | 2019-05-27 A | 2019-05-30 A | 12, 13 | 100% |  |  |
| 15 |  | Identificación de restricciones del sistema a desarrollar | 3d | 2019-05-28 A | 2019-05-30 A | 14FF | 100% |  |  |
| 16 |  | Análisis de los requerimientos | 3d | 2019-05-31 A | 2019-06-04 A | 15, 14 | 100% |  |  |
| 17 |  | Representación de los requerimientos | 2d | 2019-06-03 A | 2019-06-04 A | 16FF | 100% |  |  |
| 18 |  | Comunicación de los requerimientos | 1d | 2019-06-05 A | 2019-06-05 A | 17 | 100% |  |  |
| 19 |  | Validación de requerimientos | 1d | 2019-06-06 A | 2019-06-06 A | 18FF | 100% |  |  |
| 20 |  | Generación del SRS | 15d | 2019-05-20 A | 2019-06-07 A |  | 100% |  |  |
| 21 |  | Hito "Firma del SRS" | 0d | 2019-06-07 | 2019-06-07 |  |  |  |  |
| 22 | 1.3 | **Diseño funcional** | 7d | 2019-06-10 A | 2019-06-18 |  | 99% |  |  |
| 23 |  | Definir la estructura del producto | 1d | 2019-06-10 A | 2019-06-10 A |  | 100% |  |  |
| 24 |  | Definir el funcionamiento del producto | 3d | 2019-06-11 A | 2019-06-13 A | 23FF | 100% |  |  |
| 25 |  | Definir las pantallas del producto | 2d | 2019-06-12 A | 2019-06-13 A | 24FF | 100% |  |  |
| 26 |  | Definir los servicios y funcionalidades | 2d | 2019-06-12 A | 2019-06-13 A | 25FF | 100% |  |  |
| 27 |  | Generar mapa de navegación | 1d | 2019-06-14 A | 2019-06-14 A | 25, 26 | 100% |  |  |
| 28 |  | Crear el prototipo de alto nivel | 1d | 2019-06-14 A | 2019-06-14 A | 27FF | 100% |  |  |
| 29 |  | Hito "Firma de acuerdo con el diseño funcional" | 0d | 2019-06-14 | 2019-06-14 |  |  |  |  |
| 30 | 1.4 | **Diseño técnico** | 10d | 2019-06-17 A | 2019-06-28 |  | 45% |  |  |
| 31 |  | Diseño de diagramas de clases | 3d | 2019-06-17 A | 2019-06-19 |  | 33% |  |  |
| 32 |  | Generar el diagrama E-R | 2d | 2019-06-18 A | 2019-06-19 | 31FF | 50% |  |  |
| 33 |  | Validar el diagrama E-R | 2d | 2019-06-20 A | 2019-06-21 | 32 | 50% |  |  |
| 34 |  | Transformar al diagrama relacional | 1d | 2019-06-21 | 2019-06-21 | 33FF |  |  |  |
| 35 |  | Codificar las pantallas | 3d | 2019-06-24 A | 2019-06-26 |  | 67% |  |  |
| 36 |  | Validar entradas de datos | 3d | 2019-06-24 A | 2019-06-26 | 35FF | 67% |  |  |
| 37 |  | Generar ejemplos de reportes | 2d | 2019-06-25 A | 2019-06-26 | 36FF | 50% |  |  |
| 38 |  | Validar reportes | 2d | 2019-06-27 | 2019-06-28 | 36, 37 |  |  |  |
| 39 |  | Generar documento de especificación de diseño funcional y técnico | 10d | 2019-06-17 A | 2019-06-28 | 38FF | 50% |  |  |
| 40 |  | Hito "Validación y firma del SDS" | 1d | 2019-06-28 | 2019-06-28 |  |  |  |  |
| 41 | 1.5 | **Código** | 20d | 2019-07-01 A | 2019-07-26 |  | 42% |  |  |
| 42 |  | Programar funcionalidades de la base de datos | 5d | 2019-07-01 A | 2019-07-05 A |  | 100% |  |  |
| 43 |  | Programar el módulo 1 | 4d | 2019-07-02 A | 2019-07-05 | 42FF | 50% |  |  |
| 44 |  | Pruebas unitarias | 1d | 2019-07-05 | 2019-07-05 |  |  |  |  |
| 45 |  | Programar el módulo 2 | 4d | 2019-07-08 A | 2019-07-11 |  | 50% |  |  |
| 46 |  | Pruebas unitarias | 3d | 2019-07-10 | 2019-07-12 | 44FF |  |  |  |
| 47 |  | Programar el módulo 3 | 4d | 2019-07-15 A | 2019-07-18 |  | 50% |  |  |
| 48 |  | Pruebas unitarias | 3d | 2019-07-16 | 2019-07-18 | 47FF |  |  |  |
| 49 |  | Programar el módulo 4 | 4d | 2019-07-22 A | 2019-07-25 |  | 50% |  |  |
| 50 |  | Pruebas unitarias | 2d | 2019-07-24 | 2019-07-25 |  |  |  |  |
| 51 |  | Validación contra diseño y funcionalidad | 1d | 2019-07-26 | 2019-07-26 | 44, 46, 48, 50 |  |  |  |
| 52 |  | Hito "Validación contra diseño y funcionalidad" | 0d | 2019-07-26 | 2019-07-26 |  |  |  |  |
| 53 | 1.6 | **Pruebas** | 10d | 2019-07-29 | 2019-08-09 |  |  |  |  |
| 54 |  | Subir módulos a servidor de pruebas | 3d | 2019-07-29 | 2019-07-31 |  |  |  |  |
| 55 |  | Pruebas de componentes | 2d | 2019-07-30 | 2019-07-31 | 54FF |  |  |  |
| 56 |  | Pruebas de integración de software | 2d | 2019-08-01 | 2019-08-02 | 54, 55 |  |  |  |
| 57 |  | Pruebas de aceptación | 1d | 2019-08-02 | 2019-08-02 | 55, 56FF |  |  |  |
| 58 |  | Subir software a sistema a servidor de producción | 3d | 2019-08-05 | 2019-08-07 | 57 |  |  |  |
| 59 |  | Pruebas de estrés | 2d | 2019-08-06 | 2019-08-07 | 58FF |  |  |  |
| 60 |  | Pruebas de aceptación | 2d | 2019-08-08 | 2019-08-09 |  |  |  |  |
| 61 |  | Entrega del producto final | 1d | 2019-08-09 | 2019-08-09 | 60FF |  |  |  |
| 62 |  | Hito "Producto final implementado en la empresa" | 0d | 2019-08-09 | 2019-08-09 |  |  |  |  |
| 63 | 1.7 | **Reunión con clientes** | 71d | 2019-05-03 A | 2019-08-09 |  | 87% |  |  |
| 64 |  | Reunión con clientes 1 | 1d | 2019-05-03 A | 2019-05-03 A |  | 100% |  | start no earlier than 2019-05-03 |
| 65 |  | Reunión con clientes 2 | 1d | 2019-05-10 A | 2019-05-10 A |  | 100% |  | start no earlier than 2019-05-10 |
| 66 |  | Reunión con clientes 3 | 1d | 2019-05-17 A | 2019-05-17 A |  | 100% |  | start no earlier than 2019-05-17 |
| 67 |  | Reunión con clientes 4 | 1d | 2019-05-24 A | 2019-05-24 A |  | 100% |  | start no earlier than 2019-05-24 |
| 68 |  | Reunión con clientes 5 | 1d | 2019-05-31 A | 2019-05-31 A |  | 100% |  | start no earlier than 2019-05-31 |
| 69 |  | Reunión con clientes 6 | 1d | 2019-06-07 A | 2019-06-07 A |  | 100% |  | start no earlier than 2019-06-07 |
| 70 |  | Reunión con clientes 7 | 1d | 2019-06-14 A | 2019-06-14 A |  | 100% |  | start no earlier than 2019-06-14 |

| ID | Task | Duration | Start | Finish | Complete | Constraint |
| --- | --- | --- | --- | --- | --- | --- |
| 71 | Reunión con clientes 8 | 1d | 2019-06-21 A | 2019-06-21 A | 100% | start no earlier than 2019-06-21 |
| 72 | Reunión con clientes 9 | 1d | 2019-06-28 A | 2019-06-28 A | 100% | start no earlier than 2019-06-28 |
| 73 | Reunión con clientes 10 | 1d | 2019-07-05 A | 2019-07-05 A | 100% | start no earlier than 2019-07-05 |
| 74 | Reunión con clientes 11 | 1d | 2019-07-12 A | 2019-07-12 A | 100% | start no earlier than 2019-07-12 |
| 75 | Reunión con clientes 12 | 1d | 2019-07-19 A | 2019-07-19 A | 100% | start no earlier than 2019-07-19 |
| 76 | Reunión con clientes 13 | 1d | 2019-07-26 A | 2019-07-26 A | 100% | start no earlier than 2019-07-26 |
| 77 | Reunión con clientes 14 | 1d | 2019-08-02 | 2019-08-02 |  | start no earlier than 2019-08-02 |
| 78 | Reunión con clientes 15 | 1d | 2019-08-09 | 2019-08-09 |  | start no earlier than 2019-08-09 |

## Version 2 (saved 2019-07-27)

Note of the change: Se cambiaron fechas en la planeacion

Last finish 2019-08-09 → 2019-08-02 (-7d). Complete tasks 36 → 34.

Removed: 78 Reunión con clientes 15

Changed:

| ID | Task | Start | Finish | Duration | Complete | Other |
| --- | --- | --- | --- | --- | --- | --- |
| 1 | **Proyecto Aplicación web "Mueblería Casa Morales"** |  | 2019-08-09 → 2019-08-02 (-7d) | 71d → 66d | 66% → 71% |  |
| 19 | Validación de requerimientos |  | 2019-06-06 A → 2019-06-06 |  | 100% → 99% | resources Líder; Laptop HP [200%]; Licencia de office; Electricidad [200%]; Internet; Ratón HP → Líder; Laptop HP [200%]; Licencia de office; Electricidad [200%]; Internet; Ratón HP; Transporte |
| 41 | **Código** |  |  |  | 42% → 52% |  |
| 42 | Programar funcionalidades de la base de datos |  | 2019-07-05 A → 2019-07-04 (-1d) | 5d → 4d | 100% → 75% | resources Diseñador de la Base de Datos; Electricidad [200%]; Internet [200%]; Laptop Lenovo [200%] → Diseñador de la Base de Datos; Electricidad [300%]; Internet [300%]; Laptop Lenovo [300%] |
| 43 | Programar el módulo 1 |  | 2019-07-05 → 2019-07-04 (-1d) | 4d → 3d | 50% → 67% | resources Diseñador de la Base de Datos; Programador; Electricidad [300%]; Internet [300%]; Laptop Lenovo [300%]; Licencia de office [200%]; Licencia de visio → Diseñador de la Base de Datos; Programador; Electricidad [240%]; Internet [240%]; Laptop Lenovo [240%]; Licencia de office [193.3%]; Licencia de visio |
| 44 | Pruebas unitarias | 2019-07-05 → 2019-07-04 (-1d) | 2019-07-05 → 2019-07-04 (-1d) |  |  |  |
| 45 | Programar el módulo 2 | 2019-07-08 A → 2019-07-05 A (-3d) | 2019-07-11 → 2019-07-09 (-2d) | 4d → 3d | 50% → 67% |  |
| 46 | Pruebas unitarias | 2019-07-10 → 2019-07-09 (-1d) | 2019-07-12 → 2019-07-09 (-3d) | 3d → 1d |  |  |
| 47 | Programar el módulo 3 | 2019-07-15 A → 2019-07-10 A (-5d) | 2019-07-18 → 2019-07-12 (-6d) | 4d → 3d | 50% → 67% |  |
| 48 | Pruebas unitarias | 2019-07-16 → 2019-07-12 (-4d) | 2019-07-18 → 2019-07-12 (-6d) | 3d → 1d |  |  |
| 49 | Programar el módulo 4 | 2019-07-22 A → 2019-07-15 A (-7d) | 2019-07-25 → 2019-07-17 (-8d) | 4d → 3d | 50% → 67% |  |
| 50 | Pruebas unitarias | 2019-07-24 → 2019-07-17 (-7d) | 2019-07-25 → 2019-07-17 (-8d) | 2d → 1d |  |  |
| 51 | Validación contra diseño y funcionalidad | 2019-07-26 → 2019-07-18 (-8d) | 2019-07-26 → 2019-07-18 (-8d) |  |  |  |
| 52 | Hito "Validación contra diseño y funcionalidad" | 2019-07-26 → 2019-07-18 (-8d) | 2019-07-26 → 2019-07-18 (-8d) |  |  |  |
| 53 | **Pruebas** | 2019-07-29 → 2019-07-19 (-10d) | 2019-08-09 → 2019-08-02 (-7d) | 10d → 11d |  |  |
| 54 | Subir módulos a servidor de pruebas | 2019-07-29 → 2019-07-19 (-10d) | 2019-07-31 → 2019-07-22 (-9d) | 3d → 2d |  |  |
| 55 | Pruebas de componentes | 2019-07-30 → 2019-07-22 (-8d) | 2019-07-31 → 2019-07-23 (-8d) |  |  |  |
| 56 | Pruebas de integración de software | 2019-08-01 → 2019-07-24 (-8d) | 2019-08-02 → 2019-07-25 (-8d) |  |  |  |
| 57 | Pruebas de aceptación | 2019-08-02 → 2019-07-25 (-8d) | 2019-08-02 → 2019-07-25 (-8d) |  |  |  |
| 58 | Subir software a sistema a servidor de producción | 2019-08-05 → 2019-07-26 (-10d) | 2019-08-07 → 2019-07-26 (-12d) | 3d → 1d |  |  |
| 59 | Pruebas de estrés | 2019-08-06 → 2019-07-29 (-8d) | 2019-08-07 → 2019-07-30 (-8d) |  |  |  |
| 60 | Pruebas de aceptación | 2019-08-08 → 2019-07-31 (-8d) | 2019-08-09 → 2019-08-01 (-8d) |  |  |  |
| 61 | Entrega del producto final | 2019-08-09 → 2019-08-02 (-7d) | 2019-08-09 → 2019-08-02 (-7d) |  |  |  |
| 62 | Hito "Producto final implementado en la empresa" | 2019-08-09 → 2019-08-02 (-7d) | 2019-08-09 → 2019-08-02 (-7d) |  |  |  |
| 63 | **Reunión con clientes** |  | 2019-08-09 → 2019-08-02 (-7d) | 71d → 66d | 87% → 93% |  |

## Version 3 (saved 2019-07-27)

Note of the change: Se modifico la planeación

Last finish stays 2019-08-02.

Changed:

| ID | Task | Other |
| --- | --- | --- |
| 49 | Programar el módulo 4 | resources none → Electricidad; Internet; Laptop Lenovo; Programador |
| 50 | Pruebas unitarias | resources none → Electricidad; Encargado de Pruebas; Internet; Laptop Dell |
| 61 | Entrega del producto final | resources none → Analista; Cliente; Comida; Electricidad; Impresora; Internet; Laptop HP; Licencia de office; Licencia de project; Licencia de visio; Líder; Papelería; Ratón HP; Transporte |

## Version 4 (saved 2019-08-02)

Note of the change: Documentos finales

Last finish stays 2019-08-02. Complete tasks 34 → 63.

Changed:

| ID | Task | Start | Finish | Complete | Other |
| --- | --- | --- | --- | --- | --- |
| 1 | **Proyecto Aplicación web "Mueblería Casa Morales"** |  |  | 71% → 99% |  |
| 30 | **Diseño técnico** |  | 2019-06-28 A | 45% → 100% |  |
| 31 | Diseño de diagramas de clases |  | 2019-06-19 A | 33% → 100% |  |
| 32 | Generar el diagrama E-R |  | 2019-06-19 A | 50% → 100% |  |
| 33 | Validar el diagrama E-R |  | 2019-06-21 A | 50% → 100% |  |
| 34 | Transformar al diagrama relacional | 2019-06-21 A | 2019-06-21 A | 0% → 100% |  |
| 35 | Codificar las pantallas |  | 2019-06-26 A | 67% → 100% |  |
| 36 | Validar entradas de datos |  | 2019-06-26 A | 67% → 100% |  |
| 37 | Generar ejemplos de reportes |  | 2019-06-26 A | 50% → 100% |  |
| 38 | Validar reportes | 2019-06-27 A | 2019-06-28 A | 0% → 100% |  |
| 39 | Generar documento de especificación de diseño funcional y técnico |  | 2019-06-28 A | 50% → 100% |  |
| 40 | Hito "Validación y firma del SDS" | 2019-06-28 A | 2019-06-28 A | 0% → 100% |  |
| 41 | **Código** |  |  | 52% → 99% |  |
| 42 | Programar funcionalidades de la base de datos |  | 2019-07-04 A | 75% → 100% |  |
| 43 | Programar el módulo Usuarios |  | 2019-07-04 A | 67% → 100% | was named Programar el módulo 1 |
| 44 | Pruebas unitarias | 2019-07-04 A | 2019-07-04 A | 0% → 100% |  |
| 45 | Programar el módulo Productos |  | 2019-07-09 A | 67% → 100% | was named Programar el módulo 2 |
| 46 | Pruebas unitarias | 2019-07-09 A | 2019-07-09 A | 0% → 100% |  |
| 47 | Programar el módulo Comentarios |  | 2019-07-12 A | 67% → 100% | was named Programar el módulo 3 |
| 48 | Pruebas unitarias | 2019-07-12 A | 2019-07-12 A | 0% → 100% |  |
| 49 | Programar el módulo Compras |  | 2019-07-17 A | 67% → 100% | was named Programar el módulo 4 |
| 50 | Pruebas unitarias | 2019-07-17 A | 2019-07-17 A | 0% → 100% |  |
| 51 | Validación contra diseño y funcionalidad | 2019-07-18 A | 2019-07-18 A | 0% → 100% |  |
| 53 | **Pruebas** | 2019-07-19 A |  | 0% → 99% |  |
| 54 | Subir módulos a servidor de pruebas | 2019-07-19 A | 2019-07-22 A | 0% → 100% |  |
| 55 | Pruebas de componentes | 2019-07-22 A | 2019-07-23 A | 0% → 100% |  |
| 56 | Pruebas de integración de software | 2019-07-24 A | 2019-07-25 A | 0% → 100% |  |
| 57 | Pruebas de aceptación | 2019-07-25 A | 2019-07-25 A | 0% → 100% |  |
| 58 | Subir software a sistema a servidor de producción | 2019-07-26 A | 2019-07-26 A | 0% → 100% |  |
| 59 | Pruebas de estrés | 2019-07-29 A | 2019-07-30 A | 0% → 100% |  |
| 60 | Pruebas de aceptación | 2019-07-31 A | 2019-08-01 A | 0% → 100% |  |
| 61 | Entrega del producto final | 2019-08-02 A | 2019-08-02 A | 0% → 100% |  |
| 63 | **Reunión con clientes** |  | 2019-08-02 A | 93% → 100% |  |
| 77 | Reunión con clientes 14 | 2019-08-02 A | 2019-08-02 A | 0% → 100% |  |
